# FP UB Sahara Production Release v2 SAFE

How a schedule from MS Project changed from version to version. A marks actual dates.

## Version 1 (saved 2002-06-29, file Electrical Sahara Production Release SAFE.mpp)

| ID | WBS | Task | Duration | Start | Finish | Predecessors | Complete | Total float | Constraint |
| --- | --- | --- | --- | --- | --- | --- | --- | --- | --- |
| 1 | 1 | **DJ35 PCB Build x52** | 23d | 2002-05-20 A | 2002-06-19 A |  | 100% |  |  |
| 2 |  | DJ-35 MAIN-02-A parts kit | 2d | 2002-05-20 A | 2002-05-21 A |  | 100% |  | start no earlier than 2002-05-20 |
| 3 |  | DJ-35 4x MAIN PCA | 5d | 2002-05-22 A | 2002-05-28 A | 2 | 100% |  |  |
| 4 |  | DJ-35 4x MAIN review | 2d | 2002-05-29 A | 2002-05-30 A | 3 | 100% |  |  |
| 5 |  | DJ-35 parts kit | 4d | 2002-05-29 A | 2002-06-03 A |  | 100% |  | start no earlier than 2002-05-28 |
| 6 |  | DJ-35 remaining PCA | 9d | 2002-06-04 A | 2002-06-14 A | 5, 4 | 100% |  |  |
| 7 |  | DJ-35 Box (case, HDD, CDD, LCD) | 0d | 2002-06-12 A | 2002-06-12 A |  | 100% |  | start no earlier than 2002-06-07 |
| 8 |  | DJ-35 PCB EVT | 3d | 2002-06-17 A | 2002-06-19 A | 6 | 100% |  |  |
| 9 |  | DJ-35 HW Evt and Box Build | 20d | 2002-06-20 A | 2002-07-19 | 1 | 50% | 89d |  |
| 10 |  | External BETA | 7w | 2002-06-21 A | 2002-08-12 | 1 | 30% | 73d |  |
| 11 |  | FP Release BOM | 10d | 2002-05-06 A | 2002-05-17 A |  | 100% |  |  |
| 12 | 5 | **UB BOM feedback** | 23d | 2002-05-20 | 2002-06-19 | 11 |  | 109d |  |
| 13 |  | UB Req. Mech BOM Changes | 5d | 2002-05-20 | 2002-05-24 |  |  | 127d |  |
| 14 |  | UB Req. Sourcing BOM Changes | 23d | 2002-05-20 | 2002-06-19 |  |  | 109d |  |
| 15 |  | UB Req. ASY BOM Changes | 5d | 2002-05-20 | 2002-05-24 |  |  | 127d |  |
| 16 |  | FP add UB BOM changes | 7d | 2002-06-20 A | 2002-06-28 A | 12 | 100% |  |  |
| 17 |  | FP Breadboard test new Audio | 3d | 2002-07-01 | 2002-07-03 | 16 |  | 14d |  |
| 18 | 8 | **FP Build PCB-03-A** | 20d | 2002-07-08 | 2002-08-02 | 17 |  | 15d |  |
| 19 |  | FP ROUTE PCB-03-A | 8d | 2002-07-08 | 2002-07-17 |  |  | 15d |  |
| 20 |  | FP RTFAB-03-A | 5d | 2002-07-18 | 2002-07-24 | 19 |  | 15d |  |
| 21 |  | FP RTASY-03-A | 7d | 2002-07-25 | 2002-08-02 | 20 |  | 15d |  |
| 22 |  | FP HW EVT, EMI | 15d | 2002-08-05 | 2002-08-23 | 18, 23 |  | 15d |  |
| 23 |  | Complete HW Factory Test | 4w | 2002-07-08 | 2002-08-02 |  |  | 15d | start no earlier than 2002-07-08 |
| 24 |  | UB review gerber for ICT | 5w | 2002-07-18 | 2002-08-21 | 19 |  | 17d |  |
| 25 |  | FP/Fiori Create Test Fixture | 4w | 2002-07-15 | 2002-08-09 |  |  | 15d | start no earlier than 2002-07-15 |
| 26 |  | UB Review test fixture | 10d | 2002-08-12 | 2002-08-23 | 25, 18 |  | 15d |  |
| 27 | 14 | **FP Build PCB-04-A** | 14d | 2002-08-26 | 2002-09-13 | 22, 24, 26, 54 |  | 15d |  |
| 28 |  | FP ROUTE -04-A | 3d | 2002-08-26 | 2002-08-28 |  |  | 15d |  |
| 29 |  | FP RTFAB -04-A | 5d | 2002-08-29 | 2002-09-05 | 28 |  | 15d |  |
| 30 |  | FP RTASY -04-A | 6d | 2002-09-06 | 2002-09-13 | 29 |  | 15d |  |
| 31 |  | FP HW EVT -04-A | 5d | 2002-09-16 | 2002-09-20 | 27 |  | 30d |  |
| 32 |  | UB build ICT | 4w | 2002-09-16 | 2002-10-11 | 27 |  | 15d |  |
| 33 |  | Pilot run PCA ASY | 1w | 2002-10-15 | 2002-10-21 | 34, 32, 31, 58 |  | 14d |  |
| 34 |  | UB Order BOM parts | 14w | 2002-07-08 | 2002-10-14 | 17 |  | 14d |  |
| 35 | 19 | **Old Fiori Sched** | 57d | 2002-05-08 A | 2002-07-29 |  | 47% | 83d |  |
| 36 |  | prelim plastic spec | 12d | 2002-05-08 A | 2002-05-23 A |  | 100% |  | finish no earlier than 2002-05-23 |
| 37 |  | TriHonor feedback | 15d | 2002-05-24 A | 2002-06-13 A | 36 | 100% |  |  |
| 38 |  | Fiori final rev | 6w | 2002-06-14 | 2002-07-29 | 37 |  | 83d | finish no earlier than 2002-07-01 |
| 39 |  | Review CD-ROM samples and spec | 10d | 2002-06-28 A | 2002-07-15 |  |  | 4d | start no earlier than 2002-05-20 |
| 40 |  | Approve and purchase CD-ROM | 1d | 2002-06-25 | 2002-06-25 |  |  | 0d | start no earlier than 2002-06-25 |
| 41 | 22 | **Fiori Proto 1** | 16d | 2002-06-26 | 2002-07-19 | 40 |  | 0d |  |
| 42 |  | FP change plastic for CD-ROM | 6d | 2002-06-26 | 2002-07-03 |  |  | 0d |  |
| 43 |  | Fiori Proto 1 | 5d | 2002-07-08 | 2002-07-12 | 42 |  | 0d |  |
| 44 |  | Fiori fit Proto 1, implement changes | 5d | 2002-07-15 | 2002-07-19 | 43 |  | 0d |  |
| 45 | 23 | **Fiori Proto 2 and Final CAD Release** | 21d | 2002-07-22 | 2002-08-19 | 39, 41 |  | 0d |  |
| 46 |  | Fiori 2nd Proto | 15d | 2002-07-22 | 2002-08-09 |  |  | 0d |  |
| 47 |  | Fiori 2nd Proto Review and Update | 5d | 2002-08-12 | 2002-08-16 | 46 |  | 0d |  |
| 48 |  | Fiori Final CAD Release | 1d | 2002-08-19 | 2002-08-19 | 47 |  | 0d |  |
| 49 |  | UB review Final CAD | 4d | 2002-08-20 | 2002-08-23 | 45 |  | 0d |  |
| 50 |  | TriHonor plastic tool lead | 60ed | 2002-08-24 | 2002-10-23 | 49 |  | 0d | as late as possible |
| 51 |  | first shot approval | 5d | 2002-10-23 | 2002-10-29 | 50 |  | 0d |  |
| 52 |  | order plastic production | 12ed | 2002-10-30 | 2002-11-11 | 51 |  | 0d | as late as possible |
| 53 |  | Pilot run box asy | 2w | 2002-11-11 | 2002-11-22 | 52, 33, 55, 59, 61 |  | 0d |  |
| 54 |  | Regulatory approvals | 15d | 2002-08-05 | 2002-08-23 | 18 |  | 15d | start no earlier than 2002-06-24 |
| 55 |  | Remote Control | 14w | 2002-08-02 | 2002-11-08 |  |  | 0d | as late as possible |
| 56 |  | PCB-03 breadboard hack to SW | 0d | 2002-07-08 | 2002-07-08 | 17FS+1d |  | 98d |  |
| 57 |  | First PCB-03 to SW | 0d | 2002-08-06 | 2002-08-06 | 18FS+2d |  | 77d |  |
| 58 |  | Factory Test Flash | 6w | 2002-08-30 | 2002-10-11 |  |  | 0d | must finish on 2002-10-11 |
| 59 |  | Final Flash Image | 5d | 2002-11-04 | 2002-11-08 |  |  | 0d | as late as possible |
| 60 |  | Final CD Image | 0d | 2002-10-14 | 2002-10-14 |  |  | 0d | as late as possible |
| 61 |  | Duplicate CDs | 4w | 2002-10-14 | 2002-11-08 | 60 |  | 0d | as late as possible |

## Version 2 (saved 2002-06-29, file Electrical Sahara Production Release GOAL.mpp)

Last finish 2002-11-22 → 2002-10-28 (-25d).

Changed:

| ID | Task | Start | Finish | Duration | Total float | Predecessors | Other |
| --- | --- | --- | --- | --- | --- | --- | --- |
| 18 | **FP Build PCB-03-A** |  | 2002-08-02 → 2002-07-22 (-11d) | 20d → 11d | 15d → 6d |  |  |
| 19 | FP ROUTE PCB-03-A |  | 2002-07-17 → 2002-07-12 (-5d) | 8d → 5d | 15d → 6d |  |  |
| 20 | FP RTFAB-03-A | 2002-07-18 → 2002-07-15 (-3d) | 2002-07-24 → 2002-07-16 (-8d) | 5d → 2d | 15d → 6d |  |  |
| 21 | FP RTASY-03-A | 2002-07-25 → 2002-07-17 (-8d) | 2002-08-02 → 2002-07-22 (-11d) | 7d → 4d | 15d → 6d |  |  |
| 22 | FP HW EVT, EMI | 2002-08-05 → 2002-07-23 (-13d) | 2002-08-23 → 2002-08-19 (-4d) | 15d → 4w | 15d → 6d |  |  |
| 23 | Complete HW Factory Test |  | 2002-08-02 → 2002-07-19 (-14d) | 4w → 2w | 15d → 31d |  |  |
| 24 | UB review gerber for ICT | 2002-07-18 → 2002-07-15 (-3d) | 2002-08-21 → 2002-08-09 (-12d) | 5w → 4w | 17d → 31d |  |  |
| 25 | FP/Fiori Create Test Fixture |  | 2002-08-09 → 2002-08-02 (-7d) | 4w → 3w | 15d → 12d |  |  |
| 26 | UB Review test fixture | 2002-08-12 → 2002-08-05 (-7d) | 2002-08-23 → 2002-08-09 (-14d) | 10d → 1w | 15d → 12d |  |  |
| 27 | **FP Build PCB-04-A** | 2002-08-26 → 2002-08-20 (-6d) | 2002-09-13 → 2002-08-29 (-15d) | 14d → 8d | 15d → 6d |  |  |
| 28 | FP ROUTE -04-A | 2002-08-26 → 2002-08-20 (-6d) | 2002-08-28 → 2002-08-21 (-7d) | 3d → 2d | 15d → 6d |  |  |
| 29 | FP RTFAB -04-A | 2002-08-29 → 2002-08-22 (-7d) | 2002-09-05 → 2002-08-23 (-13d) | 5d → 2d | 15d → 6d |  |  |
| 30 | FP RTASY -04-A | 2002-09-06 → 2002-08-26 (-11d) | 2002-09-13 → 2002-08-29 (-15d) | 6d → 4d | 15d → 6d |  |  |
| 31 | FP HW EVT -04-A | 2002-09-16 → 2002-08-30 (-17d) | 2002-09-20 → 2002-09-06 (-14d) |  | 30d → 21d |  |  |
| 32 | UB build ICT | 2002-09-16 → 2002-08-30 (-17d) | 2002-10-11 → 2002-09-27 (-14d) |  | 15d → 6d |  |  |
| 33 | Pilot run PCA ASY | 2002-10-15 → 2002-10-01 (-14d) | 2002-10-21 → 2002-10-07 (-14d) |  | 14d → 5d |  |  |
| 34 | UB Order BOM parts |  | 2002-10-14 → 2002-09-30 (-14d) | 14w → 12w | 14d → 5d |  |  |
| 41 | **Fiori Proto 1** |  | 2002-07-19 → 2002-07-15 (-4d) | 16d → 12d |  |  |  |
| 42 | FP change plastic for CD-ROM |  | 2002-07-03 → 2002-06-28 (-5d) | 6d → 3d |  |  |  |
| 43 | Fiori Proto 1 | 2002-07-08 → 2002-07-01 (-7d) | 2002-07-12 → 2002-07-09 (-3d) |  |  |  |  |
| 44 | Fiori fit Proto 1, implement changes | 2002-07-15 → 2002-07-10 (-5d) | 2002-07-19 → 2002-07-15 (-4d) | 5d → 4d |  |  |  |
| 45 | **Fiori Proto 2 and Final CAD Release** | 2002-07-22 → 2002-07-16 (-6d) | 2002-08-19 → 2002-08-12 (-7d) | 21d → 20d |  |  |  |
| 46 | Fiori 2nd Proto | 2002-07-22 → 2002-07-16 (-6d) | 2002-08-09 → 2002-08-05 (-4d) |  |  |  |  |
| 47 | Fiori 2nd Proto Review and Update | 2002-08-12 → 2002-08-06 (-6d) | 2002-08-16 → 2002-08-12 (-4d) |  |  |  |  |
| 48 | Fiori Final CAD Release | 2002-08-19 → 2002-08-12 (-7d) | 2002-08-19 → 2002-08-12 (-7d) | 1d → 0d |  |  |  |
| 49 | UB review Final CAD | 2002-08-20 → 2002-08-12 (-8d) | 2002-08-23 → 2002-08-12 (-11d) | 4d → 0d |  |  |  |
| 50 | TriHonor plastic tool lead | 2002-08-24 → 2002-08-13 (-11d) | 2002-10-23 → 2002-10-02 (-21d) | 60ed → 50ed |  |  |  |
| 51 | first shot approval | 2002-10-23 → 2002-10-02 (-21d) | 2002-10-29 → 2002-10-04 (-25d) | 5d → 3d |  |  |  |
| 52 | order plastic production | 2002-10-30 → 2002-10-05 (-25d) | 2002-11-11 → 2002-10-15 (-27d) | 12ed → 10ed |  |  |  |
| 53 | Pilot run box asy | 2002-11-11 → 2002-10-15 (-27d) | 2002-11-22 → 2002-10-28 (-25d) |  |  |  |  |
| 54 | Regulatory approvals | 2002-08-05 → 2002-07-23 (-13d) | 2002-08-23 → 2002-08-19 (-4d) | 15d → 20d | 15d → 6d |  |  |
| 55 | Remote Control | 2002-08-02 → 2002-07-29 (-4d) | 2002-11-08 → 2002-10-14 (-25d) | 14w → 11w |  |  |  |
| 57 | First PCB-03 to SW | 2002-08-06 → 2002-07-23 (-14d) | 2002-08-06 → 2002-07-23 (-14d) |  | 77d → 68d | 18FS+2d → 18FS+1d |  |
| 58 | Factory Test Flash | 2002-08-30 → 2002-08-02 (-28d) | 2002-10-11 → 2002-09-13 (-28d) |  |  |  | constraint must finish on 2002-10-11 → must start on 2002-08-02 |
| 59 | Final Flash Image | 2002-11-04 → 2002-10-08 (-27d) | 2002-11-08 → 2002-10-14 (-25d) |  |  |  |  |
| 60 | Final CD Image | 2002-10-14 → 2002-09-17 (-27d) | 2002-10-14 → 2002-09-17 (-27d) |  |  |  |  |
| 61 | Duplicate CDs | 2002-10-14 → 2002-09-17 (-27d) | 2002-11-08 → 2002-10-14 (-25d) |  |  |  |  |

## Version 3 (saved 2002-08-27, file Electrical Sahara Production Release LATEST.mpp)

Last finish 2002-10-28 → 2003-01-28 (+92d). Complete tasks 11 → 15.

Added:

| ID | Task | Duration | Start | Finish | Predecessors |
| --- | --- | --- | --- | --- | --- |
| 11 | External BETA 2 | 20d | 2002-10-11 | 2002-11-07 | 32FS+8d |
| 19 | FP Create Route kit | 5d | 2002-07-15 | 2002-07-19 | 18 |
| 22 | Review placement | 1d | 2002-07-26 | 2002-07-26 | 21 |
| 23 | Paradigm critical route | 6d | 2002-07-29 | 2002-08-05 | 22 |
| 24 | FP critical route review | 1d | 2002-08-06 | 2002-08-06 | 23 |
| 25 | FP design changes | 1d | 2002-08-07 | 2002-08-07 | 24 |
| 26 | Pardigm final route | 2d | 2002-08-08 | 2002-08-09 | 25 |
| 27 | review final route | 2d | 2002-08-12 | 2002-08-13 | 26 |
| 30 | FP Box Build + HWEVT | 1d | 2002-08-23 | 2002-08-23 | 29 |
| 31 | FP HW DVT | 10d | 2002-08-26 | 2002-09-09 | 20 |
| 32 | **FP Build PCB-03-B** | 13d | 2002-09-12 | 2002-09-30 | 31, 40, 63 |
| 33 | FP ROUTE PCB-03-B | 5d | 2002-09-12 | 2002-09-18 |  |
| 34 | FP RTFAB-03-B | 3d | 2002-09-19 | 2002-09-23 | 33 |
| 35 | FP RTASY-03-B | 5d | 2002-09-24 | 2002-09-30 | 34 |
| 36 | FP Box Build + HWEVT | 20d | 2002-10-01 | 2002-10-28 | 35 |
| 38 | FP EMI/UL/ESD/DNR/THD | 40d | 2002-10-03 | 2002-12-02 | 31, 61 |
| 63 | Fit Mech to Electrical | 3d | 2002-09-09 | 2002-09-11 | 62 |

Changed:

| ID | Task | Start | Finish | Duration | Complete | Total float | Predecessors | Other |
| --- | --- | --- | --- | --- | --- | --- | --- | --- |
| 1 | **DJ35 PCB Build x52** |  |  |  |  |  |  | baseline start none → 2002-05-20; baseline finish none → 2002-06-19 |
| 2 | DJ-35 MAIN-02-A parts kit |  |  |  |  |  |  | baseline finish 2002-05-20 → 2002-05-21 |
| 3 | DJ-35 4x MAIN PCA |  |  |  |  |  |  | baseline start 2002-05-20 → 2002-05-22; baseline finish 2002-05-25 → 2002-05-28 |
| 4 | DJ-35 4x MAIN review |  |  |  |  |  |  | baseline start 2002-05-27 → 2002-05-29; baseline finish 2002-05-31 → 2002-05-30 |
| 5 | DJ-35 parts kit |  |  |  |  |  |  | baseline start 2002-05-28 → 2002-05-29; baseline finish 2002-05-28 → 2002-06-03 |
| 6 | DJ-35 remaining PCA |  |  |  |  |  |  | baseline start 2002-06-03 → 2002-06-04; baseline finish 2002-06-07 → 2002-06-14 |
| 7 | DJ-35 Box (case, HDD, CDD, LCD) |  |  |  |  |  |  | baseline start 2002-06-07 → 2002-06-12; baseline finish 2002-06-07 → 2002-06-12 |
| 8 | DJ-35 PCB EVT |  |  |  |  |  |  | baseline start none → 2002-06-17; baseline finish none → 2002-06-19 |
| 9 | DJ-35 HW DVT and Box Build |  | 2002-07-19 A |  | 50% → 100% | 89d → none |  | was named DJ-35 HW Evt and Box Build; baseline start 2002-06-10 → 2002-06-20; baseline finish 2002-06-14 → 2002-07-19 |
| 10 | External BETA |  |  |  |  | 73d → 59d |  | baseline start 2002-06-24 → 2002-06-21; baseline finish 2002-07-19 → 2002-08-12 |
| 13 | **UB BOM feedback** |  |  |  |  | 90d → 143d |  | baseline start none → 2002-05-20; baseline finish none → 2002-06-19 |
| 15 | UB Req. Sourcing BOM Changes |  |  |  |  | 109d → 140d |  | baseline finish 2002-05-24 → 2002-06-19 |
| 17 | FP add UB BOM changes |  |  |  |  |  |  | baseline start 2002-05-27 → 2002-06-20; baseline finish 2002-05-30 → 2002-06-28 |
| 18 | FP Breadboard test new Audio |  | 2002-07-03 → 2002-07-12 (+9d) | 3d → 8d |  | 5d → 3d |  | baseline start none → 2002-07-01; baseline finish none → 2002-07-03 |
| 20 | **FP Build PCB-03-A** | 2002-07-08 → 2002-07-22 (+14d) | 2002-07-22 → 2002-08-23 (+32d) | 11d → 25d |  | 6d → 3d | 18 → 19 | baseline start none → 2002-07-08; baseline finish none → 2002-07-22 |
| 21 | FP ROUTE PCB-03-A | 2002-07-08 → 2002-07-22 (+14d) | 2002-07-12 → 2002-07-25 (+13d) | 5d → 4d |  | 6d → 3d |  | baseline start 2002-05-31 → 2002-07-08; baseline finish 2002-06-03 → 2002-07-12 |
| 28 | FP RTFAB-03-A | 2002-07-15 → 2002-08-14 (+30d) | 2002-07-16 → 2002-08-16 (+31d) | 2d → 3d |  | 6d → 3d | 21 → 27 | baseline start 2002-06-24 → 2002-07-15; baseline finish 2002-06-28 → 2002-07-16 |
| 29 | FP RTASY-03-A | 2002-07-17 → 2002-08-19 (+33d) | 2002-07-22 → 2002-08-22 (+31d) |  |  | 6d → 3d |  | baseline start 2002-07-01 → 2002-07-17; baseline finish 2002-07-05 → 2002-07-22 |
| 37 | FP HW DVT, EMI | 2002-07-23 → 2002-10-01 (+70d) | 2002-08-19 → 2002-11-25 (+98d) | 4w → 40d |  | 6d → 2d | 20, 39 → 32 | was named FP HW EVT, EMI; baseline start 2002-07-08 → 2002-07-23; baseline finish 2002-07-19 → 2002-08-19 |
| 39 | Complete HW Factory Test |  |  |  |  | 31d → 118d |  | baseline start 2002-06-10 → 2002-07-08; baseline finish 2002-07-05 → 2002-07-19 |
| 40 | UB review gerber for ICT | 2002-07-15 → 2002-08-26 (+42d) | 2002-08-09 → 2002-09-09 (+31d) | 4w → 2w |  | 31d → 4d | 21 → 20 | baseline start 2002-06-04 → 2002-07-15; baseline finish 2002-06-10 → 2002-08-09 |
| 41 | FP/Fiori Create Test Fixture |  |  |  |  | 12d → 72d |  | baseline start 2002-06-10 → 2002-07-15; baseline finish 2002-07-19 → 2002-08-02 |
| 42 | UB Review test fixture | 2002-08-05 → 2002-08-26 (+21d) | 2002-08-09 → 2002-08-30 (+21d) |  |  | 12d → 62d |  | baseline start 2002-07-29 → 2002-08-05; baseline finish 2002-08-02 → 2002-08-09 |
| 43 | **FP Build PCB-04-A** | 2002-08-20 → 2002-12-03 (+105d) | 2002-08-29 → 2002-12-19 (+112d) | 8d → 13d |  | 6d → 0d | 37, 40, 42, 71 → 37, 40, 42, 71, 38 | baseline start none → 2002-08-20; baseline finish none → 2002-08-29 |
| 44 | FP ROUTE -04-A | 2002-08-20 → 2002-12-03 (+105d) | 2002-08-21 → 2002-12-09 (+110d) | 2d → 5d |  | 6d → 0d |  | baseline start 2002-07-22 → 2002-08-20; baseline finish 2002-07-24 → 2002-08-21 |
| 45 | FP RTFAB -04-A | 2002-08-22 → 2002-12-10 (+110d) | 2002-08-23 → 2002-12-12 (+111d) | 2d → 3d |  | 6d → 0d |  | baseline start 2002-07-25 → 2002-08-22; baseline finish 2002-07-26 → 2002-08-23 |
| 46 | FP RTASY -04-A | 2002-08-26 → 2002-12-13 (+109d) | 2002-08-29 → 2002-12-19 (+112d) | 4d → 5d |  | 6d → 0d |  | baseline start 2002-07-26 → 2002-08-26; baseline finish 2002-07-30 → 2002-08-29 |
| 47 | FP HW DVT -04-A | 2002-08-30 → 2002-12-20 (+112d) | 2002-09-06 → 2003-01-07 (+123d) | 5d → 3d |  | 21d → 0d |  | was named FP HW EVT -04-A; baseline start 2002-07-31 → 2002-08-30; baseline finish 2002-08-02 → 2002-09-06 |
| 48 | UB build ICT | 2002-08-30 → 2002-10-04 (+35d) | 2002-09-27 → 2002-10-31 (+34d) |  |  | 6d → 35d | 43 → 32FS+3d | baseline start 2002-07-25 → 2002-08-30; baseline finish 2002-08-21 → 2002-09-27 |
| 49 | Pilot run PCA ASY | 2002-10-01 → 2003-01-08 (+99d) | 2002-10-07 → 2003-01-14 (+99d) |  |  | 5d → 0d |  | baseline start 2002-09-11 → 2002-10-01; baseline finish 2002-09-17 → 2002-10-07 |
| 50 | UB Order BOM parts | 2002-07-08 → 2002-09-10 (+64d) | 2002-09-30 → 2002-12-19 (+80d) | 12w → 14w |  | 5d → 3d | 18 → 18, 31 | baseline start 2002-05-31 → 2002-07-08; baseline finish 2002-08-08 → 2002-09-30 |
| 51 | **Old Fiori Sched** |  |  |  |  | 64d → 117d |  | baseline start none → 2002-05-08; baseline finish none → 2002-07-29 |
| 53 | TriHonor feedback |  |  |  |  |  |  | baseline finish 2002-05-30 → 2002-06-13 |
| 54 | Fiori final rev |  |  |  |  | 83d → 114d |  | baseline start 2002-06-04 → 2002-06-14; baseline finish 2002-07-01 → 2002-07-29 |
| 55 | Review CD-ROM samples and spec |  |  |  |  | 0d → 18d |  | baseline start 2002-05-20 → 2002-06-28; baseline finish 2002-05-24 → 2002-07-15 |
| 56 | Approve and purchase CD-ROM | 2002-06-25 A | 2002-06-25 A |  | 0% → 100% | 0d → none |  | baseline start 2002-05-24 → 2002-06-25; baseline finish 2002-05-24 → 2002-06-25 |
| 57 | **Fiori Proto 1** | 2002-06-26 A | 2002-07-15 → 2002-08-12 (+28d) | 12d → 32d | 0% → 47% |  |  | baseline start none → 2002-06-26; baseline finish none → 2002-07-15 |
| 58 | FP change plastic for CD-ROM | 2002-06-26 A | 2002-06-28 → 2002-07-01 A (+3d) | 3d → 4d | 0% → 100% | 0d → none |  | baseline start 2002-05-27 → 2002-06-26; baseline finish 2002-05-31 → 2002-06-28 |
| 59 | Fiori Proto 1 | 2002-07-01 → 2002-07-02 A (+1d) | 2002-07-09 → 2002-07-18 A (+9d) | 5d → 11d | 0% → 100% | 0d → none |  | baseline start none → 2002-07-01; baseline finish none → 2002-07-09 |
| 60 | Fiori fit Proto 1, implement changes | 2002-07-10 → 2002-07-19 (+9d) | 2002-07-15 → 2002-08-12 (+28d) | 4d → 17d |  |  |  | baseline start none → 2002-07-10; baseline finish none → 2002-07-15 |
| 61 | **Fiori Proto 2** | 2002-07-16 → 2002-08-13 (+28d) | 2002-08-12 → 2002-10-02 (+51d) | 20d → 36d |  |  |  | was named Fiori Proto 2 and Final CAD Release; baseline start none → 2002-07-16; baseline finish none → 2002-08-12 |
| 62 | Fiori 2nd Proto | 2002-07-16 → 2002-08-13 (+28d) | 2002-08-05 → 2002-09-06 (+32d) | 15d → 18d |  |  |  | baseline start none → 2002-07-16; baseline finish none → 2002-08-05 |
| 64 | Fiori 2nd Proto Review and Update | 2002-08-06 → 2002-09-12 (+37d) | 2002-08-12 → 2002-10-02 (+51d) | 5d → 15d |  |  | 62 → 63 | baseline start none → 2002-08-06; baseline finish none → 2002-08-12 |
| 65 | Fiori Final CAD Release | 2002-08-12 → 2002-10-02 (+51d) | 2002-08-12 → 2002-10-02 (+51d) |  |  | 0d → 8d | 64 → 61 | baseline start none → 2002-08-12; baseline finish none → 2002-08-12 |
| 66 | UB review Final CAD | 2002-08-12 → 2002-10-03 (+52d) | 2002-08-12 → 2002-10-08 (+57d) | 0d → 4d |  | 0d → 8d | 61 → 65 | baseline start none → 2002-08-12; baseline finish none → 2002-08-12 |
| 67 | TriHonor plastic tool lead | 2002-08-13 → 2002-10-08 (+56d) | 2002-10-02 → 2002-12-07 (+66d) | 50ed → 60ed |  | 0d → 31.88d |  | constraint as late as possible → none; baseline start 2002-07-01 → 2002-08-13; baseline finish 2002-08-30 → 2002-10-02 |
| 68 | first shot approval | 2002-10-02 → 2002-12-09 (+68d) | 2002-10-04 → 2002-12-11 (+68d) |  |  | 0d → 7d |  | baseline start 2002-08-30 → 2002-10-02; baseline finish 2002-09-02 → 2002-10-04 |
| 69 | order plastic production | 2002-10-05 → 2002-12-11 (+67d) | 2002-10-15 → 2002-12-21 (+67d) |  |  | 0d → 73.88d |  | constraint as late as possible → none; baseline start 2002-09-02 → 2002-10-05; baseline finish 2002-09-17 → 2002-10-15 |
| 70 | Pilot run box asy | 2002-10-15 → 2003-01-15 (+92d) | 2002-10-28 → 2003-01-28 (+92d) |  |  |  |  | baseline start 2002-09-18 → 2002-10-15; baseline finish 2002-10-01 → 2002-10-28 |
| 71 | Regulatory approvals | 2002-07-23 → 2002-10-01 (+70d) | 2002-08-19 → 2002-11-04 (+77d) | 20d → 25d |  | 6d → 17d | 20 → 20, 63, 32 | baseline start 2002-08-16 → 2002-07-23; baseline finish 2002-08-16 → 2002-08-19 |
| 72 | Remote Control | 2002-07-29 → 2002-10-11 (+74d) | 2002-10-14 → 2003-01-14 (+92d) |  |  |  |  | baseline start 2002-06-24 → 2002-07-29; baseline finish 2002-07-19 → 2002-10-14 |
| 73 | PCB-03 breadboard hack to SW | 2002-07-08 → 2002-07-15 (+7d) | 2002-07-08 → 2002-07-15 (+7d) |  |  | 98d → 122d |  | baseline start none → 2002-07-08; baseline finish none → 2002-07-08 |
| 74 | First PCB-03 to SW | 2002-07-23 → 2002-08-26 (+34d) | 2002-07-23 → 2002-08-26 (+34d) |  |  | 68d → 97d |  | baseline start none → 2002-07-23; baseline finish none → 2002-07-23 |
| 75 | Factory Test Flash |  |  |  |  |  |  | baseline start none → 2002-08-02; baseline finish none → 2002-09-13 |
| 76 | Final Flash Image | 2002-10-08 → 2003-01-08 (+92d) | 2002-10-14 → 2003-01-14 (+92d) |  |  |  |  | baseline start none → 2002-10-08; baseline finish none → 2002-10-14 |
| 77 | Final CD Image | 2002-09-17 → 2002-12-04 (+78d) | 2002-09-17 → 2002-12-04 (+78d) |  |  |  |  | baseline start none → 2002-09-17; baseline finish none → 2002-09-17 |
| 78 | Duplicate CDs | 2002-09-17 → 2002-12-04 (+78d) | 2002-10-14 → 2003-01-14 (+92d) |  |  |  |  | baseline start none → 2002-09-17; baseline finish none → 2002-10-14 |
