# FP UB Sahara Production Release v2 GOAL

How a schedule from MS Project changed from version to version. A marks actual dates.

## Version 1 (saved 2002-06-28, file FP UB Sahara Dev and Prod schedule_62602.mpp)

| ID | WBS | Task | Duration | Start | Finish | Predecessors | Complete | Total float | Constraint |
| --- | --- | --- | --- | --- | --- | --- | --- | --- | --- |
| 1 |  | Fullplay Media Systems, Inc. | 1d? | 2002-05-06 | 2002-05-06 |  |  | 164d |  |
| 2 |  | Confidential Information | 1d? | 2002-05-06 | 2002-05-06 |  |  | 164d |  |
| 4 | 3 | **Sahara Program- Preliminary** | 168d? | 2002-05-01 A | 2002-12-23 |  | 6% | 0d |  |
| 5 |  | DJ contract completion | 28d | 2002-05-17 A | 2002-06-25 |  | 54% | 28d | finish no earlier than 2002-06-25 |
| 6 | 3.2 | **Beta Protos** | 45d | 2002-05-20 A | 2002-07-22 |  | 37% | 108d |  |
| 7 |  | DJ-35 MAIN-02-A parts kit | 1d | 2002-05-20 A | 2002-05-20 A |  | 100% |  | start no earlier than 2002-05-20 |
| 8 |  | DJ-35 4x MAIN PCA | 5ed | 2002-05-20 A | 2002-05-25 | 7 | 90% | 113.5d |  |
| 9 |  | DJ-35 4x MAIN review | 5d | 2002-05-27 A | 2002-05-31 | 8 | 10% | 26d |  |
| 10 |  | DJ-35 parts kit | 1d | 2002-05-28 A | 2002-05-28 A |  | 100% |  | start no earlier than 2002-05-28 |
| 11 |  | DJ-35 remaining PCA | 1w | 2002-06-03 A | 2002-06-07 | 10, 9 | 90% | 21.5d |  |
| 12 |  | DJ-35 Box (case, HDD, CDD, LCD) | 0d | 2002-06-07 A | 2002-06-07 A |  | 100% |  | start no earlier than 2002-06-07 |
| 13 |  | DJ-35 HW Evt and Build | 5d | 2002-06-10 A | 2002-06-14 | 11, 12 | 10% | 21d |  |
| 14 |  | Friendly External BETA | 5d | 2002-06-17 | 2002-06-21 | 13 |  | 21d |  |
| 15 |  | External BETA | 4w | 2002-06-24 | 2002-07-22 | 14 |  | 108d |  |
| 16 | 3.3 | **Software** | 84d | 2002-05-06 A | 2002-08-30 |  | 5% | 26d |  |
| 17 |  | Create HW EVT test | 6w | 2002-06-10 A | 2002-07-23 |  | 10% | 14d | finish no earlier than 2002-07-23 |
| 18 |  | Final bootloader Flash Image | 4w | 2002-07-23 A | 2002-08-19 |  | 25% | 10d |  |
| 19 |  | DJ-C40 Software Dev | 75d | 2002-05-06 | 2002-08-19 |  |  | 31d |  |
| 20 |  | Beta 1 | 4w | 2002-06-24 | 2002-07-22 |  |  | 12.5d | start no earlier than 2002-06-24 |
| 21 |  | Beta 2 | 4w | 2002-07-23 | 2002-08-19 | 20, 150 |  | 26d |  |
| 22 |  | Final Debug | 1w | 2002-08-20 | 2002-08-26 | 21 |  | 26d |  |
| 23 |  | Final Burn-In CD Image | 4d | 2002-08-27 | 2002-08-30 | 19, 22 |  | 26d |  |
| 25 | 3.4 | **Electrical** | 111.5d? | 2002-05-06 A | 2002-10-09 |  | 15% | 53.5d |  |
| 26 |  | FP Release GYR BOM for Purchasing | 10d | 2002-05-06 A | 2002-05-17 A |  | 100% |  |  |
| 27 |  | UB Req. Mech BOM Changes | 5d | 2002-05-20 A | 2002-05-24 | 26 | 85% | 46d |  |
| 28 |  | UB Req. Sourcing BOM Changes | 23d | 2002-05-20 A | 2002-06-19 | 26 | 33% | 28d |  |
| 29 |  | UB Req. ASY BOM Changes | 10d | 2002-05-20 A | 2002-05-31 | 26 | 25% | 41d |  |
| 30 |  | FP add UB BOM changes | 5d | 2002-06-20 A | 2002-06-26 | 27, 28, 29 | 20% | 27d |  |
| 31 |  | Test Cicuit for Serial and S/PDIF | 1d? | 2002-07-09 | 2002-07-09 |  |  | 119d | start no earlier than 2002-07-09 |
| 32 | 3.4.7 | **Sahara Rev 03** | 55.5d? | 2002-05-30 | 2002-08-16 |  |  | 4.5d |  |
| 33 |  | FP Complete new audio circuit | 25d | 2002-05-30 | 2002-07-03 |  |  | 4.5d | start no earlier than 2002-05-30 |
| 34 |  | Order New Parts | 5d | 2002-06-27 | 2002-07-03 |  |  | 7d | start no earlier than 2002-06-27 |
| 35 |  | Parts Arrival | 10d | 2002-07-05 | 2002-07-18 | 34 |  | 7d |  |
| 36 |  | FP ROUTE PCB-03-A | 5d | 2002-07-05 | 2002-07-11 | 33 |  | 4.5d |  |
| 37 |  | UB review gerber for ICT | 3d | 2002-07-12 | 2002-07-16 | 36 |  | 4.5d |  |
| 38 |  | FP final gerber edit-03-A | 0.5d | 2002-07-17 | 2002-07-17 | 37, 59 |  | 4.5d |  |
| 39 |  | FP RTFAB-03-A | 5d | 2002-07-17 | 2002-07-24 | 38, 60, 14 |  | 4.5d |  |
| 40 |  | Kit Preperation | 1d? | 2002-07-19 | 2002-07-19 | 35, 38 |  | 7d |  |
| 41 |  | FP RTASY-03-A | 7d | 2002-07-24 | 2002-08-02 | 14, 39, 40 |  | 4.5d |  |
| 42 |  | Receive Parts and Assemble Units | 2d | 2002-08-02 | 2002-08-06 | 41 |  | 4.5d |  |
| 43 |  | FP HW EVT, EMI | 8d | 2002-08-06 | 2002-08-16 | 17, 42 |  | 4.5d |  |
| 44 | 3.4.8 | **Sahara Rev 04** | 38d? | 2002-08-16 | 2002-10-09 |  |  | 4.5d |  |
| 45 |  | Circuit Design Change | 5d | 2002-08-16 | 2002-08-23 | 43 |  | 4.5d |  |
| 46 |  | FP xfer BOM to UB | 2d | 2002-10-07 | 2002-10-09 | 55, 62, 65, 15, 45 |  | 53.5d |  |
| 47 |  | Order New Part | 0.5d? | 2002-08-23 | 2002-08-23 | 45 |  | 6.33d |  |
| 48 |  | Parts Arrival | 5d | 2002-08-26 | 2002-08-30 | 47 |  | 6.33d |  |
| 49 |  | FP ROUTE -04-A | 3d | 2002-08-23 | 2002-08-28 | 138, 45 |  | 4.5d |  |
| 50 |  | FP RTFAB -04-A | 5d | 2002-08-28 | 2002-09-04 | 49 |  | 4.5d |  |
| 51 |  | Kit preperation | 0.67d? | 2002-09-02 | 2002-09-02 | 48, 49 |  | 6.33d |  |
| 52 |  | FP RTASY -04-A | 7d | 2002-09-04 | 2002-09-13 | 51, 50 |  | 4.5d |  |
| 53 |  | Receive board and assemble unit | 1d? | 2002-09-13 | 2002-09-16 | 52 |  | 4.5d |  |
| 54 |  | FP HW EVT -04-A | 5d | 2002-09-16 | 2002-09-23 | 53 |  | 4.5d |  |
| 55 |  | Functionality Text Fixture Design | 2w | 2002-09-23 | 2002-10-07 | 54 |  | 10.5d | start no earlier than 2002-07-08 |
| 56 | 3.5 | **Goal Dates** | 58d | 2002-05-13 | 2002-08-02 |  |  | 50.5d |  |
| 57 |  | GOAL UB confirm part changes | 0d | 2002-05-13 | 2002-05-13 |  |  | 161d | start no earlier than 2002-05-13 |
| 58 |  | GOAL FP prelim gerber for ICT | 0d | 2002-05-24 | 2002-05-24 |  |  | 152d | start no earlier than 2002-05-24 |
| 59 |  | GOAL UB feedback on ICT | 0d | 2002-05-31 | 2002-05-31 |  |  | 46.33d | start no earlier than 2002-05-31 |
| 60 |  | GOAL FP PCB RTFAB | 0d | 2002-06-07 | 2002-06-07 |  |  | 41.83d | start no earlier than 2002-06-07 |
| 61 |  | GOAL FP send ASY +3 PCB set | 0d | 2002-06-19 | 2002-06-19 |  |  | 134d | start no earlier than 2002-06-19 |
| 62 |  | GOAL FP relase final post EMI BOM | 0d | 2002-07-01 | 2002-07-01 |  |  | 124d | start no earlier than 2002-07-01 |
| 63 |  | GOAL UB review, pull trigger | 0d | 2002-07-01 | 2002-07-01 | 62 |  | 126d |  |
| 64 |  | GOAL UB start PCA Pilot Run | 0d | 2002-07-22 | 2002-07-22 |  |  | 112d | start no earlier than 2002-07-22 |
| 65 |  | GOAL FP submit regulatory paperwork | 0d | 2002-07-01 | 2002-07-01 |  |  | 124d | start no earlier than 2002-07-01 |
| 66 |  | GOAL receive final reg. approval | 0d | 2002-08-02 | 2002-08-02 |  |  | 103d | start no earlier than 2002-08-02 |
| 67 | 3.6 | **Mechanical** | 112.5d? | 2002-05-01 A | 2002-10-07 |  | 11% | 55.5d |  |
| 68 | 3.6.1 | **Sub-Assembly Acceptance** | 0d | 2002-07-08 A | 2002-07-08 |  |  | 36d |  |
| 69 |  | Bob PWR acceptance | 0d | 2002-07-08 | 2002-07-08 |  |  | 36d | start no earlier than 2002-07-08 |
| 70 |  | HDD acceptance | 0d | 2002-07-08 A | 2002-07-08 A |  | 100% |  | start no earlier than 2002-06-10 |
| 71 |  | CDD acceptance | 0d | 2002-07-08 | 2002-07-08 |  |  | 36d | start no earlier than 2002-07-08 |
| 72 |  | LCD acceptance | 0d | 2002-07-08 | 2002-07-08 |  |  | 36d | start no earlier than 2002-07-08 |

| ID | WBS | Task | Duration | Start | Finish | Predecessors | Complete | Total float | Constraint |
| --- | --- | --- | --- | --- | --- | --- | --- | --- | --- |
| 73 |  | prelim plastic spec | 10d | 2002-05-10 A | 2002-05-23 A |  | 100% |  | finish no earlier than 2002-05-23 |
| 74 |  | TriHonor Feedback | 12d | 2002-05-24 A | 2002-06-10 A | 73 | 100% |  |  |
| 75 |  | Review CD-ROM samples and spec | 47d | 2002-05-01 | 2002-07-05 |  |  | 121d | start no earlier than 2002-05-01 |
| 76 |  | Approve and purchase CD-ROM | 0d | 2002-07-05 | 2002-07-05 | 75 |  | 121d | start no earlier than 2002-06-20 |
| 77 |  | Beta Box feedback | 5d | 2002-06-24 | 2002-06-28 | 14 |  | 125d |  |
| 78 | 3.6.7 | **Sahara Proto 1** | 31.62d? | 2002-06-03 | 2002-07-17 |  |  | 2.38d |  |
| 79 |  | Files to Proto Vendors | 0d | 2002-06-03 | 2002-06-03 |  |  | 2.38d | start no earlier than 2002-06-03 |
| 80 |  | Quote Generation | 3d | 2002-06-03 | 2002-06-05 | 79 |  | 2.38d | start no earlier than 2002-06-03 |
| 81 |  | Receive and Review Quotes | 1d | 2002-06-06 | 2002-06-06 | 80 |  | 2.38d |  |
| 82 |  | Integrate DJ35 Issues and Design Changes | 16d | 2002-06-07 | 2002-06-28 | 81 |  | 2.38d |  |
| 83 |  | Release FP PO numbers to vendors | 0.12d? | 2002-07-01 | 2002-07-01 | 82 |  | 2.38d |  |
| 84 |  | Fiori 1st Protos ( 1 SLA unit) | 5d | 2002-07-01 | 2002-07-09 | 83 |  | 2.38d |  |
| 85 |  | Prototype Assembly Review and CAD Database Refinements | 6d | 2002-07-09 | 2002-07-17 | 84 |  | 2.38d |  |
| 86 |  | Updated Files to Tooling Vendors | 0.5d? | 2002-07-17 | 2002-07-17 | 85 |  | 28.38d |  |
| 87 | 3.6.8 | **Sahara Proto 2** | 20.5d | 2002-07-17 | 2002-08-14 |  |  | 2.38d |  |
| 88 |  | update file to proto vendors | 0d | 2002-07-17 | 2002-07-17 | 85 |  | 2.38d |  |
| 89 |  | release FP PO numbers | 0d | 2002-07-17 | 2002-07-17 | 88 |  | 2.38d |  |
| 90 |  | SLA Build | 5d | 2002-07-17 | 2002-07-24 | 89 |  | 2.38d |  |
| 91 |  | Urethane Build | 10d | 2002-07-24 | 2002-08-07 | 90 |  | 2.38d |  |
| 92 |  | Metal Build | 15d | 2002-07-17 | 2002-08-07 | 89 |  | 2.38d |  |
| 93 |  | Machined ABS | 10d | 2002-07-24 | 2002-08-07 | 90 |  | 2.38d |  |
| 94 |  | Parts Received | 0d | 2002-08-07 | 2002-08-07 | 93, 91, 92 |  | 2.38d |  |
| 95 |  | Proto 2 review | 0.5d | 2002-08-07 | 2002-08-07 | 94 |  | 2.38d |  |
| 96 |  | Limited CAD updates as required | 4.5d | 2002-08-07 | 2002-08-14 | 95 |  | 2.38d |  |
| 97 |  | Paint and Finish Requirements | 0.5d | 2002-07-31 | 2002-07-31 | 159 |  | 11.75d |  |
| 98 |  | Fiori final rev | 0.5d | 2002-08-14 | 2002-08-14 | 96, 97 |  | 2.38d | start no earlier than 2002-07-04 |
| 99 | 3.6.9 | **Tooling and Production Ramp Support** | 57.88d | 2002-07-17 | 2002-10-07 |  |  | 10.5d |  |
| 100 |  | CTF Drawing Creation | 30d | 2002-07-17 | 2002-08-28 | 78 |  | 28.38d |  |
| 101 |  | Functionality Text Fixture Design | 2w | 2002-09-23 | 2002-10-07 | 55SS |  | 10.5d |  |
| 103 | 3.7 | **Manufacturing** | 165d? | 2002-05-06 | 2002-12-23 |  |  | 0d |  |
| 104 | 3.7.1 | **UB Part Ordering** | 123.75d | 2002-05-06 | 2002-10-25 |  |  | 6.25d |  |
| 105 |  | UB Order BOM parts | 12w | 2002-06-27 | 2002-09-19 | 30, 5 |  | 27d |  |
| 106 |  | UB Order Power Supply from Bobbintron | 8w | 2002-07-08 | 2002-08-30 | 68 |  | 46d |  |
| 107 |  | UB Order Remote Control | 11w | 2002-08-09 | 2002-10-25 | 166 |  | 6.25d |  |
| 108 |  | UB Order LCD | 10w | 2002-07-08 | 2002-09-13 | 68 |  | 36d |  |
| 109 |  | UB Order Cirrus Parts | 8w | 2002-08-19 | 2002-10-11 |  |  | 11d | start no earlier than 2002-08-19 |
| 110 |  | Preliminary 04-X2 BOM Release | 0d | 2002-07-01 | 2002-07-01 |  |  | 90d | start no earlier than 2002-07-01 |
| 111 |  | Preliminary 04-X3 BOM release | 0d | 2002-08-28 | 2002-08-28 | 49 |  | 48.5d |  |
| 112 |  | Confirmed 04-A BOM Release | 0d | 2002-09-23 | 2002-09-23 | 54 |  | 30.5d |  |
| 113 |  | Duplicate CDs | 4w | 2002-09-02 | 2002-09-27 | 168, 23 |  | 26d |  |
| 114 |  | Duplicate Flash | 8w | 2002-08-20 | 2002-10-14 | 18 |  | 10d |  |
| 115 |  | User Guide and Quick Start Guide | 4w | 2002-08-23 | 2002-09-20 | 145 |  | 31.5d |  |
| 116 |  | Tooling Quote | 1w | 2002-05-06 | 2002-05-10 |  |  | 125d |  |
| 117 | 3.7.2 | **QA and Process Development** | 46.62d? | 2002-07-22 | 2002-09-25 |  |  | 28.38d |  |
| 118 |  | Functionality Test Devel | 4w | 2002-08-27 | 2002-09-23 | 41 |  | 29.5d |  |
| 119 |  | Release Beta 1 User Guide docs to UB | 0d | 2002-07-22 | 2002-07-22 | 150 |  | 75d |  |
| 120 |  | First release of factory functionality test | 0.5d | 2002-09-24 | 2002-09-24 | 118 |  | 29.5d | start no earlier than 2002-06-28 |
| 121 |  | Receive 2 Sahara proto 2 samples | 1d? | 2002-08-14 | 2002-08-15 | 94FS+5d |  | 57.88d |  |
| 122 |  | Box assembly docs and drawings | 30d | 2002-08-14 | 2002-09-25 | 87, 100FS-10d |  | 28.38d |  |
| 123 |  | QA processes and docs | 30d | 2002-08-14 | 2002-09-25 | 87 |  | 28.38d |  |
| 124 | 3.7.3 | **Production** | 91d | 2002-08-19 | 2002-12-23 |  |  | 0d |  |
| 125 |  | UB build ICT | 4w | 2002-09-13 | 2002-10-11 | 52 |  | 11.5d |  |
| 126 |  | plastic tool lead | 60ed | 2002-08-19 | 2002-10-18 | 98 |  | 0d | start no earlier than 2002-08-19 |
| 127 |  | first shot approval | 3ed | 2002-10-18 | 2002-10-21 | 126 |  | 0d |  |
| 128 |  | order plastic production | 15ed | 2002-10-21 | 2002-11-05 | 127, 140 |  | 0d |  |
| 129 |  | UB Review test fixture | 5d | 2002-10-07 | 2002-10-14 | 55, 101 |  | 10.5d |  |
| 130 |  | Pilot run PCA ASY | 1w | 2002-10-15 | 2002-10-21 | 105, 125, 129, 52, 114, 109 |  | 10d |  |
| 131 |  | Pilot run box asy | 2w | 2002-11-05 | 2002-11-18 | 130, 104, 113, 117, 141, 128 |  | 0d |  |
| 132 |  | Manufacturing | 20d | 2002-11-19 | 2002-12-16 | 131 |  | 0d |  |
| 133 |  | Air Freight | 5d | 2002-12-17 | 2002-12-23 | 132 |  | 0d |  |
| 135 | 3.8 | **Agency Certifications** | 70.5d | 2002-07-08 | 2002-10-14 |  |  | 37d |  |
| 136 |  | Power Supply UL, CSA Certification | 4w | 2002-07-08 | 2002-08-02 | 106SS |  | 86d | start no earlier than 2002-06-24 |
| 137 |  | UL, CSA Preliminary Testing | 3d | 2002-08-09 | 2002-08-14 | 68, 41FS+5d, 93 |  | 93.5d | start no earlier than 2002-06-24 |
| 138 |  | EMC Preliminary Testing | 2d | 2002-08-09 | 2002-08-13 | 41FS+5d, 93 |  | 12.5d |  |
| 139 |  | UL, CSA Certification | 3w | 2002-09-23 | 2002-10-14 | 136, 54, 93 |  | 50.5d |  |
| 140 |  | FCC verification | 3w | 2002-09-23 | 2002-10-14 | 54, 93 |  | 4.5d |  |
| 141 | 3.9 | **Packaging** | 11d | 2002-08-16 | 2002-09-02 |  |  | 45.25d |  |
| 142 |  | Box Graphic Design | 0d | 2002-08-16 | 2002-08-16 | 167 |  | 45.25d |  |
| 143 |  | Package Design | 8d | 2002-08-16 | 2002-08-28 | 94FS+5d, 167, 142 |  | 45.25d |  |
| 144 |  | Drop Test | 3d | 2002-08-28 | 2002-09-02 | 143 |  | 45.25d |  |

| ID | WBS | Task | Duration | Start | Finish | Predecessors | Complete | Total float | Constraint |
| --- | --- | --- | --- | --- | --- | --- | --- | --- | --- |
| 145 | 3.10 | **User Guide** | 55.5d? | 2002-06-06 A | 2002-08-23 |  |  | 31.5d |  |
| 146 | 3.10.1 | **DJ** | 55.5d | 2002-06-06 A | 2002-08-23 |  |  | 31.5d |  |
| 147 |  | Pre-beta release review | 0d | 2002-06-06 A | 2002-06-06 |  | 80% | 87d | start no earlier than 2002-06-06 |
| 148 |  | friendly release | 0d | 2002-06-21 | 2002-06-21 |  |  | 76d | start no earlier than 2002-06-21 |
| 149 |  | external beta release | 0d | 2002-07-01 | 2002-07-01 |  |  | 70d | start no earlier than 2002-07-01 |
| 150 |  | Beta 1 Review | 1w | 2002-07-16 | 2002-07-22 | 20FF |  | 26d |  |
| 151 |  | Beta 2 Review | 1w | 2002-08-13 | 2002-08-19 | 21FF |  | 31.5d |  |
| 152 |  | Final Release Review | 2.5d | 2002-08-20 | 2002-08-22 | 19, 151 |  | 31.5d | start no earlier than 2002-07-31 |
| 153 |  | Release to Printer | 1d | 2002-08-22 | 2002-08-23 | 152 |  | 31.5d |  |
| 154 | 3.10.2 | **FML** | 1d? | 2002-08-22 | 2002-08-23 |  |  | 31.5d |  |
| 155 |  | Release to Printer | 1d? | 2002-08-22 | 2002-08-23 | 152 |  | 31.5d |  |
| 156 | 3.10.3 | **WebControl** | 1d? | 2002-08-22 | 2002-08-23 |  |  | 31.5d |  |
| 157 |  | Release to Printer | 1d? | 2002-08-22 | 2002-08-23 | 152 |  | 31.5d |  |
| 158 | 3.11 | **Art** | 52.75d | 2002-06-11 | 2002-08-23 |  |  | 25.25d |  |
| 159 | 3.11.1 | **DJ-C40 Art** | 35.25d | 2002-06-11 | 2002-07-31 |  |  | 11.75d |  |
| 160 |  | Faceplate Design and Finish | 1w | 2002-06-11 | 2002-06-17 |  |  | 42d | start no earlier than 2002-06-11 |
| 161 |  | Feaatures Label | 1w | 2002-07-09 | 2002-07-15 |  |  | 19d | start no earlier than 2002-07-09 |
| 162 |  | Rearplate silkscreens | 4d | 2002-07-16 | 2002-07-19 | 161 |  | 19d | start no earlier than 2002-07-09 |
| 163 |  | Agency label | 1w | 2002-07-09 | 2002-07-15 |  |  | 6.25d | start no earlier than 2002-07-09 |
| 164 |  | Model label | 1w | 2002-07-16 | 2002-07-29 | 163 |  | 6.25d |  |
| 165 |  | Tamper Proof label | 0.25w | 2002-07-30 | 2002-07-31 | 164 |  | 6.25d |  |
| 166 |  | Remote Control Silkscreens | 1.5w | 2002-07-31 | 2002-08-09 | 165, 20 |  | 6.25d |  |
| 167 |  | box art | 1w | 2002-08-09 | 2002-08-16 | 159, 166 |  | 31.25d | start no earlier than 2002-07-18 |
| 168 |  | cd art | 1w | 2002-08-16 | 2002-08-23 | 159, 167 |  | 31.25d |  |
| 169 | 3.12 | **Trips to China** | 25d | 2002-10-15 | 2002-11-18 |  |  | 25d |  |
| 170 |  | plastic first article | 2d | 2002-10-17 | 2002-10-21 | 127FF |  | 46d |  |
| 171 |  | PCBA Review | 1w | 2002-10-15 | 2002-10-21 | 130SS |  | 43d |  |
| 172 |  | Box Build Pilot Review | 2w | 2002-11-05 | 2002-11-18 | 131SS |  | 25d |  |
| 173 |  | BTC | 1d | 2002-10-22 | 2002-10-22 | 171 |  | 43d |  |
| 174 |  | Seagate | 1d | 2002-10-23 | 2002-10-23 | 173 |  | 43d |  |

## Version 2 (saved 2002-07-04, file FP UB Sahara Dev and Prod schedule_62702.mpp)

Last finish stays 2002-12-23. Complete tasks 7 → 12.

Added:

| ID | Task | Duration | Start | Finish | Predecessors | Constraint | Resources |
| --- | --- | --- | --- | --- | --- | --- | --- |
| 85 | Release 06 version to UB | 0d | 2002-07-03 | 2002-07-03 |  | start no earlier than 2002-07-03 | Marcus |
| 86 | Specify DJ color and finish | 3d? | 2002-07-01 | 2002-07-05 | 83 |  | Kenn [25%]; Marcus [25%] |
| 165 | Label Specifications | 11d | 2002-06-20 | 2002-07-05 |  | start no earlier than 2002-06-20 | Kenn [10%] |
| 169 | New Remote Specs | 3d? | 2002-07-16 | 2002-07-18 | 20FS-5d, 165 |  | Kenn [25%] |

Changed:

| ID | Task | Start | Finish | Duration | Complete | Total float | Predecessors | Other |
| --- | --- | --- | --- | --- | --- | --- | --- | --- |
| 4 | **Sahara Program- Preliminary** |  |  |  | 6% → 15% |  |  |  |
| 6 | **Beta Protos** |  |  |  | 37% → 63% | 108d → 110d |  |  |
| 14 | Friendly External BETA | 2002-06-17 A | 2002-06-21 A |  | 0% → 100% | 21d → none |  |  |
| 15 | External BETA | 2002-06-24 A |  |  | 0% → 50% |  |  |  |
| 16 | **Software** |  |  |  | 5% → 47% |  |  |  |
| 17 | Create HW EVT test |  |  |  | 10% → 75% | 14d → 8.83d |  |  |
| 19 | DJ-C40 Software Dev | 2002-05-06 A |  |  | 0% → 60% |  |  |  |
| 20 | Beta 1 | 2002-06-24 A |  |  | 0% → 50% | 12.5d → 14.5d |  |  |
| 25 | **Electrical** |  | 2002-10-09 → 2002-10-14 (+5d) | 111.5d? → 114.17d? | 15% → 43% | 53.5d → 50.83d |  |  |
| 27 | UB Req. Mech BOM Changes |  | 2002-05-24 A |  | 85% → 100% | 46d → none |  |  |
| 28 | UB Req. Sourcing BOM Changes |  | 2002-06-19 A |  | 33% → 100% | 28d → none |  |  |
| 29 | UB Req. ASY BOM Changes |  | 2002-05-31 A |  | 25% → 100% | 41d → none |  |  |
| 30 | FP add UB BOM changes |  | 2002-06-26 A |  | 20% → 100% | 27d → none |  |  |
| 32 | **Sahara Rev 03** | 2002-05-30 → 2002-06-07 A (+8d) | 2002-08-16 → 2002-08-29 (+13d) | 55.5d? → 59d? | 0% → 28% | 4.5d → 82d |  |  |
| 33 | FP Complete new audio circuit | 2002-05-30 → 2002-06-07 A (+8d) | 2002-07-03 → 2002-07-12 (+9d) |  | 0% → 75% | 4.5d → 0d |  | constraint start no earlier than 2002-05-30 → finish no earlier than 2002-07-12 |
| 34 | Order New Parts | 2002-06-27 A |  |  | 0% → 45% | 7d → 6.33d |  |  |
| 35 | Parts Arrival | 2002-07-05 A |  |  | 0% → 15% | 7d → 4.83d |  |  |
| 36 | FP ROUTE PCB-03-A | 2002-07-05 → 2002-07-15 (+10d) | 2002-07-11 → 2002-07-19 (+8d) |  |  | 4.5d → 1.83d |  |  |
| 37 | UB review gerber for ICT | 2002-07-12 → 2002-07-22 (+10d) | 2002-07-16 → 2002-07-26 (+10d) | 3d → 5d |  | 4.5d → 105.5d |  |  |
| 38 | FP final gerber edit-03-A | 2002-07-17 → 2002-07-29 (+12d) | 2002-07-17 → 2002-07-29 (+12d) |  |  | 4.5d → 105.5d |  |  |
| 39 | FP RTFAB-03-A | 2002-07-17 → 2002-07-22 (+5d) |  | 5d → 3d |  | 4.5d → 1.83d | 38, 60, 14 → 60, 14, 36 |  |
| 40 | Kit Preperation |  |  |  |  | 7d → 4.83d | 35, 38 → 35 |  |
| 41 | FP RTASY-03-A | 2002-07-24 → 2002-07-25 (+1d) | 2002-08-02 → 2002-07-30 (-3d) | 7d → 4d |  | 4.5d → 1.83d | 14, 39, 40 → 39, 40 |  |
| 42 | Receive Parts and Assemble Units | 2002-08-02 → 2002-07-31 (-2d) | 2002-08-06 → 2002-08-01 (-5d) |  |  | 4.5d → 1.83d |  |  |
| 43 | FP HW EVT, EMI | 2002-08-06 → 2002-08-02 (-4d) | 2002-08-16 → 2002-08-29 (+13d) | 8d → 20d |  | 4.5d → 1.83d |  | resources Chrisl [25%]; Josh [20%]; Dupp [75%] → Chrisl [20%]; Josh [20%]; Dupp [75%] |
| 44 | **Sahara Rev 04** | 2002-08-16 → 2002-08-23 (+7d) | 2002-10-09 → 2002-10-14 (+5d) | 38d? → 36.17d? |  | 4.5d → 1.83d |  |  |
| 45 | Circuit Design Change | 2002-08-16 → 2002-08-23 (+7d) | 2002-08-23 → 2002-08-29 (+6d) |  |  | 4.5d → 1.83d | 43 → 43FS-5d |  |
| 46 | FP xfer BOM to UB | 2002-10-07 → 2002-10-10 (+3d) | 2002-10-09 → 2002-10-14 (+5d) |  |  | 53.5d → 50.83d |  |  |
| 47 | Order New Part | 2002-08-23 → 2002-08-30 (+7d) | 2002-08-23 → 2002-08-30 (+7d) |  |  | 6.33d → 1.83d |  |  |
| 48 | Parts Arrival | 2002-08-26 → 2002-08-30 (+4d) | 2002-08-30 → 2002-09-06 (+7d) |  |  | 6.33d → 1.83d |  |  |
| 49 | FP ROUTE -04-A | 2002-08-23 → 2002-08-30 (+7d) | 2002-08-28 → 2002-09-02 (+5d) | 3d → 2d |  | 4.5d → 3d |  |  |
| 50 | FP RTFAB -04-A | 2002-08-28 → 2002-09-03 (+6d) | 2002-09-04 → 2002-09-05 (+1d) | 5d → 3d |  | 4.5d → 3d |  |  |
| 51 | Kit preperation | 2002-09-02 → 2002-09-06 (+4d) | 2002-09-02 → 2002-09-09 (+7d) |  |  | 6.33d → 1.83d |  |  |
| 52 | FP RTASY -04-A | 2002-09-04 → 2002-09-09 (+5d) | 2002-09-13 → 2002-09-18 (+5d) |  |  | 4.5d → 1.83d |  |  |
| 53 | Receive board and assemble unit | 2002-09-13 → 2002-09-18 (+5d) | 2002-09-16 → 2002-09-19 (+3d) |  |  | 4.5d → 1.83d |  |  |
| 54 | FP HW EVT -04-A | 2002-09-16 → 2002-09-19 (+3d) | 2002-09-23 → 2002-09-26 (+3d) |  |  | 4.5d → 1.83d |  |  |
| 55 | Functionality Text Fixture Design | 2002-09-23 → 2002-09-26 (+3d) | 2002-10-07 → 2002-10-10 (+3d) |  |  | 10.5d → 7.83d |  |  |
| 67 | **Mechanical** |  | 2002-10-07 → 2002-10-10 (+3d) | 112.5d? → 115.17d? |  | 55.5d → 52.83d |  |  |
| 78 | **Sahara Proto 1** |  | 2002-07-17 → 2002-07-19 (+2d) | 31.62d? → 33.5d? |  | 2.38d → 22.5d |  |  |
| 84 | Fiori 1st Protos ( 1 SLA unit) | 2002-07-01 → 2002-07-03 (+2d) | 2002-07-09 → 2002-07-10 (+1d) |  |  | 2.38d → 0.5d | 83 → none | constraint none → start no earlier than 2002-07-03 |
| 87 | Prototype Assembly Review and CAD Database Refinements | 2002-07-09 → 2002-07-11 (+2d) | 2002-07-17 → 2002-07-18 (+1d) |  |  | 2.38d → 0.5d |  |  |
| 88 | Updated Files to Tooling Vendors | 2002-07-17 → 2002-07-19 (+2d) | 2002-07-17 → 2002-07-19 (+2d) |  |  | 28.38d → 26.5d |  |  |
| 89 | **Sahara Proto 2** | 2002-07-17 → 2002-07-11 (-6d) | 2002-08-14 → 2002-08-16 (+2d) | 20.5d → 26.25d |  | 2.38d → 0.5d |  |  |
| 90 | update file to proto vendors | 2002-07-17 → 2002-07-18 (+1d) | 2002-07-17 → 2002-07-18 (+1d) |  |  | 2.38d → 0.5d |  |  |
| 91 | release FP PO numbers | 2002-07-17 → 2002-07-18 (+1d) | 2002-07-17 → 2002-07-18 (+1d) |  |  | 2.38d → 0.5d |  |  |
| 92 | SLA Build | 2002-07-17 → 2002-07-19 (+2d) | 2002-07-24 → 2002-07-25 (+1d) |  |  | 2.38d → 0.5d |  |  |
| 93 | Urethane Build | 2002-07-24 → 2002-07-26 (+2d) | 2002-08-07 → 2002-08-08 (+1d) |  |  | 2.38d → 0.5d |  |  |
| 94 | Metal Build | 2002-07-17 → 2002-07-19 (+2d) | 2002-08-07 → 2002-08-08 (+1d) |  |  | 2.38d → 0.5d |  |  |
| 95 | Machined ABS | 2002-07-24 → 2002-07-26 (+2d) | 2002-08-07 → 2002-08-08 (+1d) |  |  | 2.38d → 0.5d |  |  |
| 96 | Parts Received | 2002-08-07 → 2002-08-08 (+1d) | 2002-08-07 → 2002-08-08 (+1d) |  |  | 2.38d → 0.5d |  |  |
| 97 | Proto 2 review | 2002-08-07 → 2002-08-09 (+2d) | 2002-08-07 → 2002-08-09 (+2d) |  |  | 2.38d → 0.5d |  |  |
| 98 | Limited CAD updates as required | 2002-08-07 → 2002-08-09 (+2d) | 2002-08-14 → 2002-08-15 (+1d) |  |  | 2.38d → 0.5d |  |  |
| 99 | Paint and Finish Requirements | 2002-07-31 → 2002-07-11 (-20d) | 2002-07-31 → 2002-07-11 (-20d) |  |  | 11.75d → 25.75d |  |  |
| 100 | Fiori final rev 07 | 2002-08-14 → 2002-08-16 (+2d) | 2002-08-14 → 2002-08-16 (+2d) |  |  | 2.38d → 0.5d |  | was named Fiori final rev |
| 101 | **Tooling and Production Ramp Support** | 2002-07-17 → 2002-07-19 (+2d) | 2002-10-07 → 2002-10-10 (+3d) | 57.88d → 58.67d |  | 10.5d → 7.83d |  |  |
| 102 | CTF Drawing Creation | 2002-07-17 → 2002-07-19 (+2d) | 2002-08-28 → 2002-08-30 (+2d) |  |  | 28.38d → 26.5d |  |  |
| 103 | Functionality Text Fixture Design | 2002-09-23 → 2002-09-26 (+3d) | 2002-10-07 → 2002-10-10 (+3d) |  |  | 10.5d → 7.83d |  |  |
| 106 | **UB Part Ordering** |  | 2002-10-25 → 2002-10-24 (-1d) | 123.75d → 122.5d |  | 6.25d → 7.5d |  |  |
| 109 | UB Order Remote Control | 2002-08-09 → 2002-08-08 (-1d) | 2002-10-25 → 2002-10-24 (-1d) |  |  | 6.25d → 7.5d |  |  |
| 113 | Preliminary 04-X3 BOM release | 2002-08-28 → 2002-09-02 (+5d) | 2002-08-28 → 2002-09-02 (+5d) |  |  | 48.5d → 45d |  |  |
| 114 | Confirmed 04-A BOM Release | 2002-09-23 → 2002-09-26 (+3d) | 2002-09-23 → 2002-09-26 (+3d) |  |  | 30.5d → 27.83d |  |  |
| 119 | **QA and Process Development** |  | 2002-09-25 → 2002-09-27 (+2d) | 46.62d? → 48.5d? |  | 28.38d → 26.5d |  |  |
| 120 | Functionality Test Devel | 2002-08-27 → 2002-07-31 (-27d) | 2002-09-23 → 2002-09-19 (-4d) |  |  | 29.5d → 31.5d |  |  |
| 122 | First release of factory functionality test | 2002-09-24 → 2002-09-20 (-4d) | 2002-09-24 → 2002-09-20 (-4d) |  |  | 29.5d → 31.5d |  |  |
| 123 | Receive 2 Sahara proto 2 samples | 2002-08-14 → 2002-08-16 (+2d) | 2002-08-15 → 2002-08-16 (+1d) |  |  | 57.88d → 56d |  |  |
| 124 | Box assembly docs and drawings | 2002-08-14 → 2002-08-16 (+2d) | 2002-09-25 → 2002-09-27 (+2d) |  |  | 28.38d → 26.5d |  |  |
| 125 | QA processes and docs | 2002-08-14 → 2002-08-16 (+2d) | 2002-09-25 → 2002-09-27 (+2d) |  |  | 28.38d → 26.5d |  |  |
| 127 | UB build ICT | 2002-09-13 → 2002-09-18 (+5d) | 2002-10-11 → 2002-10-16 (+5d) |  |  | 11.5d → 8.83d |  |  |
| 131 | UB Review test fixture | 2002-10-07 → 2002-10-10 (+3d) | 2002-10-14 → 2002-10-17 (+3d) |  |  | 10.5d → 7.83d |  |  |
| 132 | Pilot run PCA ASY | 2002-10-15 → 2002-10-17 (+2d) | 2002-10-21 → 2002-10-24 (+3d) |  |  | 10d → 7.83d |  |  |

| ID | Task | Start | Finish | Duration | Total float | Predecessors | Other |
| --- | --- | --- | --- | --- | --- | --- | --- |
| 137 | **Agency Certifications** |  | 2002-10-14 → 2002-10-17 (+3d) | 70.5d → 73.17d | 37d → 40d |  |  |
| 139 | UL, CSA Preliminary Testing |  | 2002-08-14 → 2002-08-13 (-1d) |  | 93.5d → 94d |  |  |
| 140 | EMC Preliminary Testing |  | 2002-08-13 → 2002-08-12 (-1d) |  | 12.5d → 16d |  |  |
| 141 | UL, CSA Certification | 2002-09-23 → 2002-09-26 (+3d) | 2002-10-14 → 2002-10-17 (+3d) |  | 50.5d → 47.83d |  |  |
| 142 | FCC verification | 2002-09-23 → 2002-09-26 (+3d) | 2002-10-14 → 2002-10-17 (+3d) |  | 4.5d → 1.83d |  |  |
| 143 | **Packaging** | 2002-08-16 → 2002-08-15 (-1d) | 2002-09-02 → 2002-08-30 (-3d) | 11d → 11.5d | 45.25d → 46d |  |  |
| 144 | Box Graphic Design | 2002-08-16 → 2002-08-15 (-1d) | 2002-08-16 → 2002-08-15 (-1d) |  | 45.25d → 46.5d |  |  |
| 145 | Package Design |  | 2002-08-28 → 2002-08-27 (-1d) |  | 45.25d → 46d |  |  |
| 146 | Drop Test |  | 2002-09-02 → 2002-08-30 (-3d) |  | 45.25d → 46d |  |  |
| 160 | **Art** |  | 2002-08-23 → 2002-08-22 (-1d) | 52.75d → 51.5d? | 25.25d → 22d |  |  |
| 161 | **DJ-C40 Art** |  | 2002-07-31 → 2002-07-11 (-20d) | 35.25d → 21.25d | 11.75d → 22d |  |  |
| 162 | Faceplate Design and Finish |  |  |  | 42d → 22d |  | resources Kenn; Paul Fiori → Kenn [25%]; Paul Fiori [15%] |
| 163 | Feaatures Label | 2002-07-09 → 2002-06-18 (-21d) | 2002-07-15 → 2002-07-09 (-6d) | 1w → 3w | 19d → 22d | none → 162 | constraint start no earlier than 2002-07-09 → none; resources Paul Fiori; Kenn → Paul Fiori [50%]; Kenn [25%]; Alix [25%] |
| 164 | Rearplate silkscreens | 2002-07-16 → 2002-07-02 (-14d) | 2002-07-19 → 2002-07-05 (-14d) | 4d → 2.5d | 19d → 29.5d | 163 → 163FS-5d | constraint start no earlier than 2002-07-09 → none; resources Paul Fiori; Kenn → Paul Fiori [50%]; Kenn [50%] |
| 166 | Agency label |  | 2002-07-15 → 2002-07-09 (-6d) | 1w → 0.2w | 6.25d → 25.75d | none → 165 |  |
| 167 | Model label | 2002-07-16 → 2002-07-10 (-6d) | 2002-07-29 → 2002-07-10 (-19d) | 1w → 0.15w | 6.25d → 25.75d |  |  |
| 168 | Tamper Proof label | 2002-07-30 → 2002-07-10 (-20d) | 2002-07-31 → 2002-07-11 (-20d) | 0.25w → 0.1w | 6.25d → 25.75d |  |  |
| 170 | Remote Control Silkscreens | 2002-07-31 → 2002-07-30 (-1d) | 2002-08-09 → 2002-08-08 (-1d) |  | 6.25d → 7.5d | 168, 20 → 169, 20 | constraint none → start no earlier than 2002-07-30 |
| 171 | box art | 2002-08-09 → 2002-08-08 (-1d) | 2002-08-16 → 2002-08-15 (-1d) |  | 31.25d → 32.5d |  |  |
| 172 | cd art | 2002-08-16 → 2002-08-15 (-1d) | 2002-08-23 → 2002-08-22 (-1d) |  | 31.25d → 32.5d |  |  |
| 173 | **Trips to China** | 2002-10-15 → 2002-10-17 (+2d) |  | 25d → 23d |  |  |  |
| 175 | PCBA Review | 2002-10-15 → 2002-10-17 (+2d) | 2002-10-21 → 2002-10-24 (+3d) |  | 43d → 40.83d |  |  |
| 177 | BTC | 2002-10-22 → 2002-10-24 (+2d) | 2002-10-22 → 2002-10-25 (+3d) |  | 43d → 40.83d |  |  |
| 178 | Seagate | 2002-10-23 → 2002-10-25 (+2d) | 2002-10-23 → 2002-10-28 (+5d) |  | 43d → 40.83d |  |  |

## Version 3 (saved 2002-07-10, file FP UB Sahara Dev and Prod schedule_70802.mpp)

Last finish 2002-12-23 → 2002-12-31 (+8d).

Added:

| ID | Task | Duration | Start | Finish | Predecessors | Constraint | Resources |
| --- | --- | --- | --- | --- | --- | --- | --- |
| 19 | Prepare sample boot image for gang program test | 1d | 2002-08-20 | 2002-08-20 | 18 |  |  |
| 45 | **Functionality Test Fixture** | 28d | 2002-07-15 | 2002-08-21 |  |  |  |
| 46 | Functionality Design Draft | 3d | 2002-07-15 | 2002-07-17 |  | start no earlier than 2002-07-15 | Dupp [25%]; Teman [25%]; Josh [25%] |
| 48 | Final Design Release | 2w | 2002-08-08 | 2002-08-21 | 47 |  | Josh [25%]; Dupp [15%]; Chrisl [50%] |
| 92 | Order nameplate and feature label samples | 30d | 2002-07-03 | 2002-08-21 |  | start no earlier than 2002-07-03 | Kenn |
| 125 | UB Recevies 4 V03 PCB samples from FP | 3d | 2002-07-25 | 2002-07-29 | 40 |  |  |
| 126 | UB Receives 4 V03 PCBA samples from FP | 3d | 2002-08-06 | 2002-08-08 | 42 |  |  |
| 127 | UB Receives 4 V04 x3 PCB samples from FP | 3d | 2002-09-13 | 2002-09-17 | 55 |  |  |
| 128 | UB Receives 4 V04 x3 PCBA samples from FP | 3d | 2002-09-20 | 2002-09-24 | 57 |  |  |
| 132 | UB Review Test Fixture Desgin Draft | 5d | 2002-07-18 | 2002-07-24 | 46 |  |  |
| 135 | UB test boot image programming on SST Flash with Star Tech programmer | 5d | 2002-08-21 | 2002-08-27 | 19 |  | UB |

Removed: 85 Release 06 version to UB; 120 Functionality Test Devel

Changed:

| ID | Task | Start | Finish | Duration | Complete | Total float | Predecessors | Other |
| --- | --- | --- | --- | --- | --- | --- | --- | --- |
| 4 | **Sahara Program- Preliminary** |  | 2002-12-23 → 2002-12-31 (+8d) | 168d? → 173.62d? | 15% → 11% |  |  |  |
| 6 | **Beta Protos** |  |  |  | 63% → 37% | 110d → 78.62d |  |  |
| 14 | Friendly External BETA | 2002-06-17 A → 2002-06-17 | 2002-06-21 A → 2002-06-21 |  | 100% → 0% | none → 21d |  |  |
| 15 | External BETA | 2002-06-24 A → 2002-06-24 |  |  | 50% → 0% |  |  |  |
| 16 | **Software** |  |  |  | 47% → 39% | 26d → 46.62d |  |  |
| 17 | Create HW EVT test |  |  |  | 75% → 10% | 8.83d → 16.62d |  |  |
| 20 | DJ-C40 Software Dev |  |  |  | 60% → 65% | 31d → 36.62d |  |  |
| 21 | Beta 1 |  |  |  | 50% → 60% | 14.5d → 20.12d |  |  |
| 26 | **Electrical** |  | 2002-10-14 → 2002-09-27 (-17d) | 114.17d? → 104d? | 43% → 13% | 50.83d → 66.62d |  |  |
| 28 | UB Req. Mech BOM Changes |  | 2002-05-24 A → 2002-05-24 |  | 100% → 85% | none → 51.62d |  |  |
| 29 | UB Req. Sourcing BOM Changes |  | 2002-06-19 A → 2002-06-19 |  | 100% → 33% | none → 33.62d |  |  |
| 30 | UB Req. ASY BOM Changes |  | 2002-05-31 A → 2002-05-31 |  | 100% → 25% | none → 46.62d |  |  |
| 31 | FP add UB BOM changes |  | 2002-06-26 A → 2002-06-26 |  | 100% → 20% | none → 32.62d |  |  |
| 32 | Test Cicuit for Serial and S/PDIF | 2002-07-09 A |  |  | 0% → 25% | 119d → 124.62d |  |  |
| 33 | **Sahara Rev 03** | 2002-06-07 A → 2002-06-07 | 2002-08-29 → 2002-09-04 (+6d) | 59d? → 63d? | 28% → 0% | 82d → 5.62d |  |  |
| 34 | FP Complete new audio circuit | 2002-06-07 A → 2002-06-07 |  |  | 75% → 0% | 0d → 6.12d |  |  |
| 35 | Order New Parts | 2002-06-27 A → 2002-06-27 | 2002-07-03 → 2002-07-11 (+8d) | 5d → 10d | 45% → 0% | 6.33d → 5.62d |  |  |
| 36 | Parts Arrival | 2002-07-05 A → 2002-07-12 (+7d) | 2002-07-18 → 2002-07-25 (+7d) |  | 15% → 0% | 4.83d → 5.62d |  |  |
| 38 | UB review gerber for ICT |  | 2002-07-26 → 2002-07-24 (-2d) | 5d → 3d |  | 105.5d → 6.12d |  |  |
| 39 | FP final gerber edit-03-A | 2002-07-29 → 2002-07-25 (-4d) | 2002-07-29 → 2002-07-25 (-4d) |  |  | 105.5d → 6.12d |  |  |
| 40 | FP RTFAB-03-A |  |  |  |  | 1.83d → 8.62d | 64, 14, 37 → 37 |  |
| 41 | Kit Preperation | 2002-07-19 → 2002-07-26 (+7d) | 2002-07-19 → 2002-07-29 (+10d) | 1d? → 2d? |  | 4.83d → 5.62d | 36 → 36, 39 | resources Chrisl → Chrisl [50%] |
| 42 | FP RTASY-03-A | 2002-07-25 → 2002-07-30 (+5d) | 2002-07-30 → 2002-08-05 (+6d) | 4d → 5d |  | 1.83d → 5.62d | 40, 41 → 14, 40, 41 |  |
| 43 | Receive Parts and Assemble Units | 2002-07-31 → 2002-08-06 (+6d) | 2002-08-01 → 2002-08-07 (+6d) |  |  | 1.83d → 5.62d |  |  |
| 44 | FP HW EVT, EMI | 2002-08-02 → 2002-08-08 (+6d) | 2002-08-29 → 2002-09-04 (+6d) |  |  | 1.83d → 5.62d |  | resources Chrisl [20%]; Josh [20%]; Dupp [75%] → Chrisl [25%]; Josh [20%]; Dupp [75%] |
| 47 | Preliminary Functionality Text Fixture Design | 2002-09-26 → 2002-07-18 (-70d) | 2002-10-10 → 2002-08-07 (-64d) | 2w → 3w |  | 7.83d → 58.12d | 59 → 46 | was named Functionality Text Fixture Design; constraint start no earlier than 2002-07-08 → start no earlier than 2002-07-15; resources Josh [50%]; Dupp [25%]; Kenn [10%]; Chrisl [50%] → Josh [33.3%]; Dupp [25%]; Kenn [5%]; Chrisl [50%] |
| 49 | **Sahara Rev 04** | 2002-08-23 → 2002-08-29 (+6d) | 2002-10-14 → 2002-09-27 (-17d) | 36.17d? → 22d? |  | 1.83d → 5.62d |  |  |
| 50 | Circuit Design Change | 2002-08-23 → 2002-08-29 (+6d) | 2002-08-29 → 2002-09-04 (+6d) |  |  | 1.83d → 5.62d | 44FS-5d → 44FF |  |
| 51 | FP xfer BOM to UB | 2002-10-10 → 2002-09-05 (-35d) | 2002-10-14 → 2002-09-06 (-38d) |  |  | 50.83d → 46.62d | 47, 66, 69, 15, 50 → 66, 69, 15, 50 |  |
| 52 | Order New Part | 2002-08-30 → 2002-09-05 (+6d) | 2002-08-30 → 2002-09-05 (+6d) |  |  | 1.83d → 6.12d |  |  |
| 53 | Parts Arrival | 2002-08-30 → 2002-09-05 (+6d) | 2002-09-06 → 2002-09-10 (+4d) | 5d → 3d |  | 1.83d → 6.12d |  |  |
| 54 | FP ROUTE -04-A | 2002-08-30 → 2002-09-05 (+6d) | 2002-09-02 → 2002-09-09 (+7d) | 2d → 3d |  | 3d → 5.62d |  |  |
| 55 | FP RTFAB -04-A | 2002-09-03 → 2002-09-10 (+7d) | 2002-09-05 → 2002-09-12 (+7d) |  |  | 3d → 5.62d |  |  |
| 56 | Kit preperation | 2002-09-06 → 2002-09-10 (+4d) | 2002-09-09 → 2002-09-12 (+3d) | 0.67d? → 2d |  | 1.83d → 6.12d |  |  |
| 57 | FP RTASY -04-A | 2002-09-09 → 2002-09-13 (+4d) | 2002-09-18 → 2002-09-19 (+1d) | 7d → 5d |  | 1.83d → 5.62d |  |  |
| 58 | Receive board and assemble unit | 2002-09-18 → 2002-09-20 (+2d) | 2002-09-19 → 2002-09-20 (+1d) |  |  | 1.83d → 5.62d |  |  |
| 59 | FP HW EVT -04-A | 2002-09-19 → 2002-09-23 (+4d) | 2002-09-26 → 2002-09-27 (+1d) |  |  | 1.83d → 5.62d |  |  |
| 71 | **Mechanical** |  | 2002-10-10 → 2002-09-02 (-38d) | 115.17d? → 87.62d? | 11% → 21% | 52.83d → 86d |  |  |
| 82 | **Sahara Proto 1** | 2002-06-03 A | 2002-07-19 → 2002-07-22 (+3d) | 33.5d? → 34.62d? | 0% → 69% | 22.5d → 31d |  |  |
| 83 | Files to Proto Vendors | 2002-06-03 A | 2002-06-03 A |  | 0% → 100% | 2.38d → none |  |  |
| 84 | Quote Generation | 2002-06-03 A | 2002-06-05 A |  | 0% → 100% | 2.38d → none |  |  |
| 85 | Receive and Review Quotes | 2002-06-06 A | 2002-06-06 A |  | 0% → 100% | 2.38d → none |  |  |
| 86 | Integrate DJ35 Issues and Design Changes | 2002-06-07 A | 2002-06-28 A |  | 0% → 100% | 2.38d → none |  |  |
| 87 | Release FP PO numbers to vendors | 2002-07-01 A | 2002-07-01 A |  | 0% → 100% | 2.38d → none |  |  |
| 88 | Fiori 1st Protos ( 1 SLA and metal unit) | 2002-07-03 → 2002-07-01 A (-2d) | 2002-07-10 → 2002-07-12 (+2d) | 5d → 8d | 0% → 65% | 0.5d → 0d | none → 87 | was named Fiori 1st Protos ( 1 SLA unit); constraint start no earlier than 2002-07-03 → none |
| 89 | Specify DJ color and finish | 2002-07-01 A |  |  | 0% → 25% | 36.88d → 42.5d |  |  |
| 90 | Prototype Assembly Review and CAD Database Refinements | 2002-07-11 → 2002-07-12 (+1d) | 2002-07-18 → 2002-07-22 (+4d) |  |  | 0.5d → 0d |  |  |
| 91 | Updated Files to Tooling Vendors | 2002-07-19 → 2002-07-22 (+3d) | 2002-07-19 → 2002-07-22 (+3d) |  |  | 26.5d → 31d |  |  |
| 93 | **Sahara Proto 2** | 2002-07-11 → 2002-07-15 (+4d) | 2002-08-16 → 2002-08-26 (+10d) | 26.25d → 30.62d |  | 0.5d → 0d |  |  |
| 94 | update file to proto vendors | 2002-07-18 → 2002-07-22 (+4d) | 2002-07-18 → 2002-07-22 (+4d) |  |  | 0.5d → 0d |  |  |
| 95 | release FP PO numbers | 2002-07-18 → 2002-07-22 (+4d) | 2002-07-18 → 2002-07-22 (+4d) |  |  | 0.5d → 0d |  |  |
| 96 | SLA Build | 2002-07-19 → 2002-07-22 (+3d) | 2002-07-25 → 2002-07-29 (+4d) |  |  | 0.5d → 0d |  |  |
| 97 | Urethane Build | 2002-07-26 → 2002-07-29 (+3d) | 2002-08-08 → 2002-08-19 (+11d) | 10d → 15d |  | 0.5d → 0d |  |  |
| 98 | Metal Build | 2002-07-19 → 2002-07-22 (+3d) | 2002-08-08 → 2002-08-12 (+4d) |  |  | 0.5d → 5d |  |  |
| 99 | Machined ABS | 2002-07-26 → 2002-07-29 (+3d) | 2002-08-08 → 2002-08-12 (+4d) |  |  | 0.5d → 5d |  |  |
| 100 | Parts Received | 2002-08-08 → 2002-08-19 (+11d) | 2002-08-08 → 2002-08-19 (+11d) |  |  | 0.5d → 0d |  |  |
| 101 | Proto 2 review | 2002-08-09 → 2002-08-19 (+10d) | 2002-08-09 → 2002-08-19 (+10d) |  |  | 0.5d → 0d |  |  |
| 102 | Limited CAD updates as required | 2002-08-09 → 2002-08-19 (+10d) | 2002-08-15 → 2002-08-26 (+11d) |  |  | 0.5d → 0d |  |  |
| 103 | Paint and Finish Requirements | 2002-07-11 → 2002-07-15 (+4d) | 2002-07-11 → 2002-07-15 (+4d) |  |  | 25.75d → 29.62d |  |  |
| 104 | Fiori final rev | 2002-08-16 → 2002-08-26 (+10d) | 2002-08-16 → 2002-08-26 (+10d) |  |  | 0.5d → 0d |  | was named Fiori final rev 07 |
| 105 | **Tooling and Production Ramp Support** | 2002-07-19 → 2002-07-18 (-1d) | 2002-10-10 → 2002-09-02 (-38d) | 58.67d → 32.62d |  | 7.83d → 33.62d |  |  |
| 106 | CTF Drawing Creation | 2002-07-19 → 2002-07-22 (+3d) | 2002-08-30 → 2002-09-02 (+3d) |  |  | 26.5d → 31d |  | resources Marcus → Marcus [25%] |
| 107 | Functionality Text Fixture Design | 2002-09-26 → 2002-07-18 (-70d) | 2002-10-10 → 2002-07-31 (-71d) |  |  | 7.83d → 63.62d |  |  |
| 109 | **Manufacturing** |  | 2002-12-23 → 2002-12-31 (+8d) | 165d? → 170.62d |  |  |  |  |
| 111 | UB Order BOM parts | 2002-06-27 → 2002-07-10 (+13d) | 2002-09-19 → 2002-10-01 (+12d) |  |  | 27d → 24.62d |  | constraint none → start no earlier than 2002-07-10 |
| 112 | UB Order Power Supply from Bobbintron | 2002-07-08 → 2002-07-12 (+4d) | 2002-08-30 → 2002-09-05 (+6d) |  |  | 46d → 47.62d |  | constraint none → start no earlier than 2002-07-12 |
| 116 | Preliminary 04-X2 BOM Release | 2002-07-01 → 2002-07-12 (+11d) | 2002-07-01 → 2002-07-12 (+11d) |  |  | 90d → 86.62d | none → 34 | constraint start no earlier than 2002-07-01 → start no earlier than 2002-07-12 |
| 117 | Preliminary 04-X3 BOM release | 2002-09-02 → 2002-09-06 (+4d) | 2002-09-02 → 2002-09-06 (+4d) |  |  | 45d → 46.62d | 54 → 51 |  |
| 118 | Confirmed 04-A BOM Release | 2002-09-26 → 2002-09-27 (+1d) | 2002-09-26 → 2002-09-27 (+1d) |  |  | 27.83d → 31.62d |  |  |
| 123 | **QA and Process Development** | 2002-07-22 → 2002-07-18 (-4d) | 2002-09-27 → 2002-10-07 (+10d) | 48.5d? → 57.62d |  | 26.5d → 26d |  |  |

| ID | Task | Start | Finish | Duration | Total float | Predecessors | Other |
| --- | --- | --- | --- | --- | --- | --- | --- |
| 129 | Receive 4 Sahara proto 2 samples | 2002-08-16 → 2002-08-26 (+10d) | 2002-08-16 → 2002-08-29 (+13d) | 1d? → 3d | 56d → 53.5d |  | was named Receive 2 Sahara proto 2 samples |
| 130 | Box assembly docs and drawings | 2002-08-16 → 2002-08-26 (+10d) | 2002-09-27 → 2002-10-07 (+10d) |  | 26.5d → 26d |  |  |
| 131 | QA processes and docs | 2002-08-16 → 2002-08-26 (+10d) | 2002-09-27 → 2002-10-07 (+10d) |  | 26.5d → 26d |  |  |
| 133 | UB Review Preliminary test fixture | 2002-10-10 → 2002-08-08 (-63d) | 2002-10-17 → 2002-08-14 (-64d) |  | 7.83d → 58.62d |  | was named UB Review test fixture |
| 134 | First release of factory functionality test | 2002-09-20 → 2002-08-22 (-29d) | 2002-09-20 → 2002-08-27 (-24d) | 0.5d → 1d | 31.5d → 55.12d | Functionality Test Devel → 48 |  |
| 136 | **Production** | 2002-08-19 → 2002-08-26 (+7d) | 2002-12-23 → 2002-12-31 (+8d) |  |  |  |  |
| 137 | UB build ICT | 2002-09-18 → 2002-09-20 (+2d) | 2002-10-16 → 2002-10-17 (+1d) |  | 8.83d → 12.62d |  |  |
| 138 | plastic tool lead | 2002-08-19 → 2002-08-26 (+7d) | 2002-10-18 → 2002-10-25 (+7d) |  |  |  |  |
| 139 | first shot approval | 2002-10-18 → 2002-10-25 (+7d) | 2002-10-21 → 2002-10-28 (+7d) |  |  |  |  |
| 140 | order plastic production | 2002-10-21 → 2002-10-28 (+7d) | 2002-11-05 → 2002-11-12 (+7d) |  |  |  |  |
| 141 | Pilot run PCA ASY | 2002-10-17 → 2002-10-18 (+1d) |  |  | 7.83d → 12.62d |  |  |
| 142 | Pilot run box asy | 2002-11-05 → 2002-11-12 (+7d) | 2002-11-18 → 2002-11-26 (+8d) |  |  | 141, 110, 119, 123, 152, 140 → 141, 110, 119, 123, 152, 140, 113 |  |
| 143 | Manufacturing | 2002-11-19 → 2002-11-26 (+7d) | 2002-12-16 → 2002-12-24 (+8d) |  |  |  |  |
| 144 | Air Freight | 2002-12-17 → 2002-12-24 (+7d) | 2002-12-23 → 2002-12-31 (+8d) |  |  |  |  |
| 146 | **Agency Certifications** | 2002-07-08 → 2002-07-12 (+4d) | 2002-10-17 → 2002-10-18 (+1d) | 73.17d → 71d | 40d → 42.62d |  |  |
| 147 | Power Supply UL, CSA Certification | 2002-07-08 → 2002-07-12 (+4d) | 2002-08-02 → 2002-08-08 (+6d) |  | 86d → 87.62d |  | constraint start no earlier than 2002-06-24 → start no earlier than 2002-07-12 |
| 148 | UL, CSA Preliminary Testing | 2002-08-09 → 2002-08-12 (+3d) | 2002-08-13 → 2002-08-15 (+2d) |  | 94d → 98.5d | 72, 42FS+5d, 99 → 72, 99, 43 |  |
| 149 | EMC Preliminary Testing | 2002-08-09 → 2002-08-13 (+4d) | 2002-08-12 → 2002-08-14 (+2d) |  | 16d → 20.62d |  |  |
| 150 | UL, CSA Certification | 2002-09-26 → 2002-09-30 (+4d) | 2002-10-17 → 2002-10-18 (+1d) |  | 47.83d → 51.62d |  |  |
| 151 | FCC verification | 2002-09-26 → 2002-09-30 (+4d) | 2002-10-17 → 2002-10-18 (+1d) |  | 1.83d → 5.62d |  |  |
| 152 | **Packaging** |  | 2002-08-30 → 2002-09-10 (+11d) | 11.5d → 17.62d | 46d → 45.5d |  |  |
| 154 | Package Design | 2002-08-16 → 2002-08-26 (+10d) | 2002-08-27 → 2002-09-05 (+9d) |  | 46d → 45.5d |  |  |
| 155 | Drop Test | 2002-08-28 → 2002-09-05 (+8d) | 2002-08-30 → 2002-09-10 (+11d) |  | 46d → 45.5d |  |  |
| 170 | **DJ-C40 Art** |  | 2002-07-11 → 2002-07-12 (+1d) | 21.25d → 23d | 22d → 27.62d |  |  |
| 172 | Feaatures Label | 2002-06-18 → 2002-06-21 (+3d) | 2002-07-09 → 2002-07-12 (+3d) |  | 22d → 29.62d |  | constraint none → finish no earlier than 2002-07-12 |
| 173 | Rearplate silkscreens | 2002-07-02 → 2002-07-08 (+6d) | 2002-07-05 → 2002-07-10 (+5d) |  | 29.5d → 32.12d |  |  |
| 179 | Remote Control Silkscreens |  |  |  | 7.5d → 13.12d | 178, 21 → 178 |  |
| 182 | **Trips to China** | 2002-10-17 → 2002-10-18 (+1d) | 2002-11-18 → 2002-11-26 (+8d) | 23d → 27.62d |  |  |  |
| 183 | plastic first article | 2002-10-17 → 2002-10-24 (+7d) | 2002-10-21 → 2002-10-28 (+7d) |  |  |  |  |
| 184 | PCBA Review | 2002-10-17 → 2002-10-18 (+1d) |  |  | 40.83d → 45.62d |  |  |
| 185 | Box Build Pilot Review | 2002-11-05 → 2002-11-12 (+7d) | 2002-11-18 → 2002-11-26 (+8d) |  |  |  |  |
| 186 | BTC | 2002-10-24 → 2002-10-25 (+1d) |  |  | 40.83d → 45.62d |  |  |
| 187 | Seagate | 2002-10-25 → 2002-10-28 (+3d) |  |  | 40.83d → 45.62d |  |  |

## Version 4 (saved 2002-07-16, file FP UB Sahara Dev and Prod schedule_71502.mpp)

Last finish stays 2002-12-31.

Added:

| ID | Task | Duration | Start | Finish | Predecessors |
| --- | --- | --- | --- | --- | --- |
| 23 | CDDB Update | 1w | 2002-08-20 | 2002-08-26 | 22 |

Changed:

| ID | Task | Start | Finish | Duration | Complete | Total float | Predecessors |
| --- | --- | --- | --- | --- | --- | --- | --- |
| 16 | **Software** |  | 2002-08-30 → 2002-09-06 (+7d) | 84d → 89d | 39% → 38% | 46.62d → 41.62d |  |
| 24 | Final Debug | 2002-08-20 → 2002-08-27 (+7d) | 2002-08-26 → 2002-09-02 (+7d) |  |  | 31.62d → 26.62d | 22 → 23 |
| 25 | Final Burn-In CD Image | 2002-08-27 → 2002-09-03 (+7d) | 2002-08-30 → 2002-09-06 (+7d) |  |  | 31.62d → 26.62d |  |
| 120 | Duplicate CDs | 2002-09-02 → 2002-09-09 (+7d) | 2002-09-27 → 2002-10-04 (+7d) |  |  | 31.62d → 26.62d |  |
| 147 | **Agency Certifications** |  | 2002-10-18 → 2002-11-07 (+20d) | 71d → 85d |  | 42.62d → 37.62d |  |
| 151 | UL, CSA Certification | 2002-09-30 → 2002-10-18 (+18d) | 2002-10-18 → 2002-11-07 (+20d) |  |  | 51.62d → 37.62d | 148, 60, 100 → 148, 60, 100, 138 |
